# Gantt chart

Schedule from MS Project, 2021-02-08 to 2022-08-04.
The University of Liverpool

## Calendars

- Standard: Mon-Fri 08:00-12:00, 13:00-17:00; Sat-Sun off.

## Schedule

| ID | WBS | Task | Type | Duration | Start | Finish | Predecessors | Total slack | Free slack | Constraint |
| --- | --- | --- | --- | --- | --- | --- | --- | --- | --- | --- |
| 1 | 1 | **BCI Project in Liverpool** |  | 385d? | 2021-02-08 | 2022-07-29 |  |  |  |  |
| 2 | 1.1 | **Literature Review and ground research** |  | 38.5d | 2021-02-08 | 2021-04-01 |  |  |  |  |
| 3 | 1.1.1 | Draft information sheet, research protocol |  | 22d | 2021-02-10 | 2021-03-11 |  | 99d | 0d | finish no earlier than 2021-03-11 |
| 4 | 1.1.2 | Meet with Prof Tang |  | 1d | 2021-03-12 | 2021-03-12 | 3 | 99d | 9d |  |
| 5 | 1.1.3 | Project plan & DNA submission | milestone | 0d | 2021-03-26 | 2021-03-26 | 4 | 355d |  | start no earlier than 2021-03-26 |
| 6 | 1.2 | **Ethnic Approval** |  | 170d? | 2021-02-08 | 2021-10-01 |  |  |  |  |
| 7 | 1.2.1 | University REC application |  | 33d | 2021-02-15 | 2021-03-31 |  | 285d | 66d | finish no earlier than 2021-03-31 |
| 8 | 1.2.2 | Obtain HRA through IRAS |  | 104d | 2021-02-08 | 2021-07-01 |  | 219d | 0d | start no earlier than 2021-02-08 |
| 9 | 1.2.3 | Mersey Care Trust R&D Review |  | 43d | 2021-07-02 | 2021-08-31 | 7, 8 | 219d | 0d | finish no earlier than 2021-08-31 |
| 10 | 1.2.4 | Apply for research passport |  | 23d | 2021-09-01 | 2021-10-01 | 9 | 219d |  | finish no earlier than 2021-10-01 |
| 11 | 1.3 | **Develop BCI Algorithm** |  | 131d? | 2021-04-02 | 2021-10-01 | 2 |  |  |  |
| 12 | 1.3.1 | Obtain EEG cap | milestone | 0d | 2021-04-05 | 2021-04-05 |  | 84d | 0d | start no earlier than 2021-04-05 |
| 13 | 1.3.2 | Familiar with MATLAB toolbox |  | 5d | 2021-04-05 | 2021-04-09 | 12 | 84d | 0d |  |
| 14 | 1.3.3 | Preprocessing, feature extraction, classification |  | 45d | 2021-04-12 | 2021-06-11 | 13 | 84d | 0d |  |
| 15 | 1.3.4 | Control interface design: Rewarding schedule through image or sound |  | 40d | 2021-06-14 | 2021-08-06 | 14 | 84d | 0d |  |
| 16 | 1.3.5 | Test & verify on BCI interface |  | 40d | 2021-08-09 | 2021-10-01 | 15 | 84d | 45d |  |
| 17 | 2 | **Y1 Report writing** |  | 158d | 2021-02-08 | 2021-09-15 |  |  |  |  |
| 18 | 2.1 | Y1 Annual Progress Report |  | 22d | 2021-06-01 | 2021-06-30 |  | 286d | 0d | finish no earlier than 2021-06-30 |
| 19 | 2.2 | Submission of APR | milestone | 0d | 2021-06-30 | 2021-06-30 | 18 | 286d |  |  |
| 20 | 2.3 | Year 1 report: review paper draft |  | 118d | 2021-02-22 | 2021-08-04 |  | 236d | 0d | start no earlier than 2021-02-22 |
| 21 | 2.4 | Submission of Year 1 report | milestone | 0d | 2021-08-04 | 2021-08-04 | 20 | 236d | 0d |  |
| 22 | 2.5 | Year 1 IPAP meeting | milestone | 0d | 2021-09-08 | 2021-09-08 | 21FS+25d | 236d |  |  |
| 23 | 3 | **Experiment** |  | 135d | 2021-10-04 | 2022-04-08 | 11, 6 | 84d |  |  |
| 24 | 3.1 | Invite Volunteers |  | 30d | 2021-10-04 | 2021-11-12 |  | 84d | 0d |  |
| 25 | 3.2 | Perform neuralfeedback training |  | 50d | 2021-12-06 | 2022-02-11 | 24FS+15d, 16 | 84d | 0d | start no earlier than 2021-11-01 |
| 26 | 3.3 | Initial Data Analysis |  | 40d | 2022-02-14 | 2022-04-08 | 25 | 84d |  | start no earlier than 2022-01-03 |

| ID | WBS | Task | Type | Duration | Start | Finish | Predecessors | Total slack | Free slack | Constraint |
| --- | --- | --- | --- | --- | --- | --- | --- | --- | --- | --- |
| 27 | 4 | **Y2 Report Writing** |  | 113d | 2022-03-01 | 2022-08-04 |  |  |  |  |
| 28 | 4.1 | Y2 Annual Progress Report |  | 38d | 2022-05-09 | 2022-06-29 |  | 26d | 0d | start no earlier than 2022-05-09 |
| 29 | 4.2 | Submission of APR | milestone | 0d | 2022-06-30 | 2022-06-30 | 28 | 26d |  | start no earlier than 2022-06-30 |
| 30 | 4.3 | Year 2 report |  | 87d | 2022-04-01 | 2022-08-01 |  | 3d |  | start no earlier than 2022-04-01 |
| 31 | 4.4 | Submission of Year 2 report | milestone | 0d | 2022-08-04 | 2022-08-04 | 30 | 0d |  | finish no earlier than 2022-08-04 |
